Schedule from MS Project, 2023-12-03 to 2024-01-24, status date 2023-12-19, 7 hours a day, costs in DA, A marks actual dates.

## Calendars

- Mon_Calendrier: Mon-Thu 08:00-12:00, 13:00-16:00; Fri-Sat off; Sun 08:00-12:00, 13:00-16:00. Exceptions (off unless hours are given): 2024-01-01 (jour de l'an), 2024-01-12 (jour de yenayer).

## Resources

| Resource | Group | Rate | Cost per use |
| --- | --- | --- | --- |
| Mohamed | Développer | 2500 |  |
| Linda | Développer | 2000 |  |
| Meriem | Designer | 3000 |  |
| Farid | Chef de projet | 3500 |  |
| Sami | administrateur réseau | 2000 |  |
| Pc portable | Matériel | 70000 | 2000 |
| Serveur | Matériel | 500000 | 4000 |
| Souris | Matériel | 700 |  |
| Switch | Matériel | 400000 | 2500 |
| Routeur | Matériel | 300000 | 3000 |

## Schedule

| ID | WBS | Task | Type | Duration | Start | Finish | Predecessors | Complete | Remaining | Baseline start | Baseline finish | Baseline duration | Total slack | Free slack | Resources | Work | Actual work | Cost | Baseline cost | Actual cost |
| --- | --- | --- | --- | --- | --- | --- | --- | --- | --- | --- | --- | --- | --- | --- | --- | --- | --- | --- | --- | --- |
| 1 | 1 | Début | milestone | 0d | 2023-12-03 | 2023-12-03 |  |  |  | 2023-12-03 | 2023-12-03 | 0d | 38d |  |  |  |  |  |  |  |
| 2 | 2 | **Planification et Analyse** |  | 4d | 2023-12-03 A | 2023-12-06 A |  | 100% |  | 2023-12-03 | 2023-12-06 | 4d |  |  |  |  |  |  |  |  |
| 3 | 2.1 | Définir les exigences du logiciel et sa faisabilité |  | 2d | 2023-12-03 A | 2023-12-04 A | 1 | 100% |  | 2023-12-03 | 2023-12-04 | 2d |  |  |  |  |  |  |  |  |
| 4 | 2.2 | Planifier le temps et les ressources |  | 2d | 2023-12-05 A | 2023-12-06 A | 3 | 100% |  | 2023-12-05 | 2023-12-06 | 2d |  |  |  |  |  |  |  |  |
| 5 | 3 | **Conception** |  | 15d | 2023-12-07 A | 2023-12-27 |  | 90% | 1.5d | 2023-12-07 | 2023-12-27 | 15d | 15d |  |  | 112h | 98h | 329,000 | 329,000 | 297,500 |
| 6 | 3.1 | Concevoir l'architecture du logiciel |  | 4d | 2023-12-07 A | 2023-12-12 A | 4 | 100% |  | 2023-12-07 | 2023-12-12 | 4d |  |  | Farid | 28h | 28h | 98,000 | 98,000 | 98,000 |
| 7 | 3.2 | Établir des spécifications fonctionnelles |  | 2d | 2023-12-13 A | 2023-12-14 A | 6 | 100% |  | 2023-12-13 | 2023-12-14 | 2d |  |  | Farid | 14h | 14h | 49,000 | 49,000 | 49,000 |
| 8 | 3.3 | Identification des technologies et outils |  | 4d | 2023-12-17 A | 2023-12-27 | 7 | 75% | 1d | 2023-12-17 | 2023-12-27 | 4d | 15d | 0d | Mohamed; Linda; Meriem; Farid; Sami | 70h | 56h | 182,000 | 182,000 | 150,500 |
| 9 | 4 | **Développement** |  | 13d | 2023-12-17 | 2024-01-03 |  |  |  | 2023-12-17 | 2024-01-03 | 13d | 0d |  |  | 154h |  | 2,252,500 | 2,252,500 |  |
| 10 | 4.1 | Créer une interface utilisateur (UI/UX) |  | 5d | 2023-12-17 | 2023-12-21 | 7 |  |  | 2023-12-17 | 2023-12-21 | 5d | 23d |  |  |  |  |  |  |  |
| 11 | 4.2 | Programmer les fonctionnalités principales |  | 7d | 2023-12-17 | 2023-12-25 | 7 |  |  | 2023-12-17 | 2023-12-25 | 7d | 0d |  | Mohamed; Linda | 98h |  | 220,500 | 220,500 |  |
| 12 | 4.3 | Mettre en place une base de données |  | 4d | 2023-12-28 | 2024-01-03 | 8, 7 |  |  | 2023-12-28 | 2024-01-03 | 4d | 15d |  | Mohamed; Pc portable | 56h |  | 2,032,000 | 2,032,000 |  |
| 13 | 5 | **Tests et Validation** |  | 12d | 2023-12-28 | 2024-01-15 |  |  |  | 2023-12-28 | 2024-01-15 | 12d | 0d |  |  | 84h |  | 185,500 | 185,500 |  |
| 14 | 5.1 | Réaliser des tests unitaires |  | 3d | 2023-12-28 | 2024-01-02 | 11FS+2d, 12 |  |  | 2023-12-28 | 2024-01-02 | 3d | 0d |  | Linda | 21h |  | 42,000 | 42,000 |  |
| 15 | 5.2 | Effectuer des tests d'intégration |  | 4d | 2024-01-03 | 2024-01-08 | 14 |  |  | 2024-01-03 | 2024-01-08 | 4d | 0d |  | Linda | 28h |  | 56,000 | 56,000 |  |
| 16 | 5.3 | Identifier et corriger les bogues |  | 5d | 2024-01-09 | 2024-01-15 | 15 |  |  | 2024-01-09 | 2024-01-15 | 5d | 0d |  | Mohamed | 35h |  | 87,500 | 87,500 |  |
| 17 | 6 | **Documentation** |  | 16d | 2023-12-26 | 2024-01-17 |  |  |  | 2023-12-26 | 2024-01-17 | 16d | 5d |  |  | 28h |  | 98,000 | 98,000 |  |
| 18 | 6.1 | Rédiger la documentation utilisateur |  | 2d | 2024-01-16 | 2024-01-17 | 16, 11, 14 |  |  | 2024-01-16 | 2024-01-17 | 2d | 0d |  | Farid | 14h |  | 49,000 | 49,000 |  |
| 19 | 6.2 | Rédiger la documentation technique |  | 2d | 2023-12-26 | 2023-12-27 | 11, 18 |  |  | 2023-12-26 | 2023-12-27 | 2d | 19d |  | Farid | 14h |  | 49,000 | 49,000 |  |
| 20 | 7 | **Déploiement et Maintenance** |  | 6d | 2024-01-17 | 2024-01-24 |  |  |  | 2024-01-17 | 2024-01-24 | 6d | 0d |  |  | 42h |  | 10,546,000 | 10,546,000 |  |
| 21 | 7.1 | Déployer le logiciel sur les serveurs ou les appareils cibles |  | 3d | 2024-01-17 | 2024-01-21 | 18FS-1d |  |  | 2024-01-17 | 2024-01-21 | 3d | 0d |  | Sami; Serveur | 42h |  | 10,546,000 | 10,546,000 |  |
| 22 | 7.2 | Assurer la formation des utilisateurs finaux |  | 2d | 2024-01-22 | 2024-01-23 | 21 |  |  | 2024-01-22 | 2024-01-23 | 2d | 1d |  |  |  |  |  |  |  |
| 23 | 7.3 | Surveiller les performances et la sécurité |  | 3d | 2024-01-22 | 2024-01-24 | 21, 22 |  |  | 2024-01-22 | 2024-01-24 | 3d | 0d |  |  |  |  |  |  |  |
| 24 | 8 | Fin | milestone | 0d | 2024-01-24 | 2024-01-24 | 23 |  |  | 2024-01-24 | 2024-01-24 | 0d | 0d |  |  |  |  |  |  |  |

Notes:
- 15: La correction des bogues est cruciale pour la fiabilité du logiciel, nécessitant une approche méthodique et proactive.~
